# F18_ubuntu_projekat

Schedule from MS Project, 2012-06-01 to 2012-08-31, costs in KM.
bringout

## Calendars

- Standard: Mon-Fri 08:00-12:00, 13:00-17:00; Sat-Sun off.

## Resources

| Resource | Rate | Cost per use |
| --- | --- | --- |
| Projekt menadžer | 12 |  |
| Serviser 1 | 6 |  |
| Serviser 2 | 6 |  |
| Programer | 10 |  |
| Predstavnik korisnika |  |  |
| UB-1204 desktop instalacija (x4) centralna lokacija |  | 320 |
| UB-1204 server instalacija |  | 350 |
| F18 client setup, prodavnica (x5) |  | 600 |
| F18 client setup, knjigovodstvo (x4) |  | 320 |
| Ubuntu radna stanica internet podrška (x5) centrala |  | 250 |
| Sistem admin | 8 |  |
| F18 server setup |  | 220 |
| UB-1204 desktop instalacija (x5) prodavnice |  | 400 |
| Ubuntu radna stanica internet podrška (x5) prodavnica |  | 250 |
| Stabilzacija sistema, podrška |  | 1000 |

## Schedule

| ID | WBS | Task | Duration | Start | Finish | Predecessors | Total slack | Free slack | Constraint | Resources | Work | Cost |
| --- | --- | --- | --- | --- | --- | --- | --- | --- | --- | --- | --- | --- |
| 1 | 1 | **Pripremne aktivnosti** | 5d | 2012-06-01 | 2012-06-07 |  | 0d |  |  |  | 60.8h | 496 |
| 2 | 1.1 | Pregled postojećeg stanja | 2d | 2012-06-01 | 2012-06-04 |  | 0d |  |  | Predstavnik korisnika; Programer [30%]; Projekt menadžer | 36.8h | 240 |
| 3 | 1.2 | Ponuda | 1d | 2012-06-05 | 2012-06-05 | 2 | 0d |  |  | Projekt menadžer | 8h | 96 |
| 4 | 1.3 | Migracija podataka | 2d | 2012-06-06 | 2012-06-07 | 3 | 0d |  |  | Programer | 16h | 160 |
| 5 | 2 | **Instalacija sistema** | 6d | 2012-06-08 | 2012-06-15 | 1 | 0d |  |  |  | 102.4h | 3,649.2 |
| 6 | 2.1 | Instalacija sistema na centralnu lokaciju | 2d | 2012-06-08 | 2012-06-11 |  | 0d |  |  | Serviser 1; Sistem admin; UB-1204 desktop instalacija (x4) centralna lokacija; UB-1204 server instalacija; F18 server setup; F18 client setup, prodavnica (x5) [400%]; Ubuntu radna stanica internet podrška (x5) centrala [500%] | 32h | 1,964 |
| 7 | 2.2 | Instalacija prodavnice | 3d | 2012-06-12 | 2012-06-14 | 6 | 0d |  |  | Serviser 1; Serviser 2; F18 client setup, prodavnica (x5) [500%]; UB-1204 desktop instalacija (x5) prodavnice [500%]; Ubuntu radna stanica internet podrška (x5) prodavnica [500%] | 48h | 1,538 |
| 8 | 2.3 | Testiranje | 1d | 2012-06-15 | 2012-06-15 | 7 | 0d |  |  | Serviser 1; Serviser 2; Sistem admin [80%] | 22.4h | 147.2 |
| 9 | 3 | **Obuka** | 2d | 2012-06-18 | 2012-06-19 | 5 | 0d |  |  |  | 41.6h | 371.2 |
| 10 | 3.1 | Obuka knjigovodstvo | 2d | 2012-06-18 | 2012-06-19 |  | 0d |  |  | Projekt menadžer [60%]; Programer | 25.6h | 275.2 |
| 11 | 3.2 | Obuka prodavnice | 2d | 2012-06-18 | 2012-06-19 |  | 0d |  |  | Serviser 1 | 16h | 96 |
| 12 | 4 | **Dokumentacija** | 10d | 2012-06-12 | 2012-06-25 | 6 | 49d |  |  |  | 78.4h | 688 |
| 13 | 4.1 | Tehnička dokumentacija | 6d | 2012-06-12 | 2012-06-19 |  | 49d | 0d |  | Sistem admin [20%]; Projekt menadžer [20%] | 14.4h | 144 |
| 14 | 4.2 | Korisnička dokumentacija | 4d | 2012-06-20 | 2012-06-25 | 13 | 49d |  |  | Projekt menadžer; Predstavnik korisnika [50%]; Programer [50%] | 64h | 544 |
| 15 | 5 | Stabilizacija sistema | 53d | 2012-06-20 | 2012-08-31 | 9 | 0d |  | must finish on 2012-08-31 | Stabilzacija sistema, podrška |  | 1,000 |

Notes:
- 2: Razgovor sa klijentom o stanju postojećeg sistema, organizaciji rada
- 14: - Izrada toka obrade dokumentacije / - Dodatna korisnička uputstva, na osnovu pitanja korisnika tokom obuke
